# CS490 Project

Schedule from MS Project, 2019-04-15 to 2019-05-09, A marks actual dates.

## Calendars

- Standard: Mon-Fri 08:00-12:00, 13:00-17:00; Sat-Sun off.

## Resources

| Resource |
| --- |
| Niveen |
| Romie |
| QA |
| Jean |
| Bek |
| All team |
| Bon |
| QA Controller |
| Ulugbek |
| Yee Mon |
| Stanley |
|  |
| Allamesm |
| Bo |
| Y |

## Schedule

| ID | WBS | Task | Type | Duration | Start | Finish | Predecessors | Complete | Remaining | Total slack | Free slack | Constraint | Deadline | Resources | Work | Actual work |
| --- | --- | --- | --- | --- | --- | --- | --- | --- | --- | --- | --- | --- | --- | --- | --- | --- |
| 1 | 1 | **Online Branded System (OBS)** |  | 19d? | 2019-04-15 08:00 A | 2019-05-09 17:00 |  | 54% | 8.72d? | 0d |  |  |  |  | 882h | 537.2h |
| 2 | 1.1 | **Milestones** |  | 1d? | 2019-05-09 08:00 | 2019-05-09 17:00 |  |  |  | 0d |  |  | 2019-05-09 00:00 |  |  |  |
| 3 | 1.1.1 | Project Presentation & UAT | milestone | 1d? | 2019-05-09 08:00 | 2019-05-09 17:00 | 151 |  |  | 0d |  | must finish on 2019-05-09 17:00 |  |  |  |  |
| 4 | 2 | **Iteration 1** |  | 5d | 2019-04-15 08:00 A | 2019-04-19 17:00 A |  | 100% |  |  |  |  |  |  | 400h | 400h |
| 5 | 1.2.1 | Collect, analysis and finlize Scope and Scope detail |  | 5d | 2019-04-15 08:00 A | 2019-04-19 17:00 A |  | 100% |  |  |  | start no earlier than 2019-04-15 08:00 |  | All team | 40h | 40h |
| 6 | 1.2.2 | Create and finalize project iteration plan |  | 5d | 2019-04-15 08:00 A | 2019-04-19 17:00 A |  | 100% |  |  |  | start no earlier than 2019-04-15 08:00 |  | Bon | 40h | 40h |
| 7 | 1.2.3 | Create and finalize WBS |  | 5d | 2019-04-15 08:00 A | 2019-04-19 17:00 A |  | 100% |  |  |  | finish no earlier than 2019-04-19 17:00 |  | Niveen; Romie | 80h | 80h |
| 8 | 1.2.4 | CreateER Diagram |  | 5d | 2019-04-15 08:00 A | 2019-04-19 17:00 A |  | 100% |  |  |  | finish no earlier than 2019-04-19 17:00 |  | Jean | 40h | 40h |
| 9 | 1.2.5 | Create System Architecture |  | 5d | 2019-04-15 08:00 A | 2019-04-19 17:00 A |  | 100% |  |  |  | finish no earlier than 2019-04-19 17:00 |  | Niveen; Bek | 80h | 80h |
| 10 | 1.2.6 | Create Project Source code structure |  | 5d | 2019-04-15 08:00 A | 2019-04-19 17:00 A |  | 100% |  |  |  | finish no earlier than 2019-04-19 17:00 |  | Jean; Romie | 80h | 80h |
| 11 | 1.2.7 | Create Functional Specification |  | 5d | 2019-04-15 08:00 A | 2019-04-19 17:00 A |  | 100% |  |  |  | finish no earlier than 2019-04-19 17:00 |  | All team | 40h | 40h |
| 12 | 2 | **Iteration 2** |  | 8.5d? | 2019-04-22 08:00 A | 2019-05-02 12:00 | 4 | 50% | 4.24d? | 0d |  |  |  |  | 268h | 134.4h |
| 13 | WBS_011 | **Entity Module** |  | 0.5d | 2019-04-22 08:00 A | 2019-04-22 12:00 A |  | 100% |  |  |  |  |  |  | 4h | 4h |
| 14 | WBS_011_001 | Entity Model |  | 0.5d | 2019-04-22 08:00 A | 2019-04-22 12:00 A |  | 100% |  |  |  |  |  | All team | 4h | 4h |
| 15 | WBS_002 | **Vendor Registration Module** |  | 3.5d | 2019-04-22 08:00 A | 2019-04-25 12:00 |  | 60% | 1.4d | 0d |  |  |  |  | 40h | 24h |
| 16 | WBS_002_001 | **Vendor Registration** |  | 2d | 2019-04-22 08:00 A | 2019-04-23 17:00 |  | 75% | 0.5d | 0d |  |  |  |  | 16h | 12h |
| 17 | WBS_002_001_001 | Design UI |  | 0.5d | 2019-04-22 08:00 A | 2019-04-22 12:00 A |  | 100% |  |  |  | start no earlier than 2019-04-22 08:00 |  | Yee Mon | 4h | 4h |
| 18 | WBS_002_001_002 | Implment Backend |  | 1d | 2019-04-22 13:00 A | 2019-04-23 12:00 A | 17 | 100% |  |  |  |  |  | Yee Mon | 8h | 8h |
| 19 | WBS_002_001_003 | Testing |  | 0.5d | 2019-04-23 13:00 | 2019-04-23 17:00 | 18 |  |  | 12d | 0d |  |  | Niveen | 4h |  |
| 20 | WBS_002_002 | **Vendor Login** |  | 2d | 2019-04-23 13:00 A | 2019-04-25 12:00 |  | 33% | 1.33d | 0d |  |  |  |  | 12h | 4h |
| 21 | WBS_002_002_001 | Design UI |  | 0.5d | 2019-04-23 13:00 A | 2019-04-23 17:00 A | 18 | 100% |  |  |  |  |  | Yee Mon | 4h | 4h |
| 22 | WBS_002_002_002 | Implement Backend |  | 0.5d | 2019-04-24 13:00 | 2019-04-24 17:00 | 46 |  |  | 9d | 0d |  |  | Yee Mon | 4h |  |
| 23 | WBS_002_002_003 | Testing |  | 0.5d | 2019-04-25 08:00 | 2019-04-25 12:00 | 22 |  |  | 10.5d | 0d |  |  | Niveen | 4h |  |
| 24 | WBS_002_003 | **Admin Forget Password** |  | 1.5d | 2019-04-22 08:00 A | 2019-04-23 12:00 |  | 67% | 0.5d | 0d |  |  |  |  | 12h | 8h |
| 25 | WBS_002_003-001 | Design UI |  | 0.5d | 2019-04-22 08:00 A | 2019-04-22 12:00 A |  | 100% |  |  |  |  |  | Stanley | 4h | 4h |
| 26 | WBS_002_003-002 | Implement Backend |  | 0.5d | 2019-04-22 13:00 A | 2019-04-22 17:00 A | 25 | 100% |  |  |  |  |  | Stanley | 4h | 4h |
| 27 | WBS_002_003-003 | Testing |  | 0.5d | 2019-04-23 08:00 | 2019-04-23 12:00 | 26 |  |  | 12.5d | 0d |  |  | Niveen | 4h |  |

Notes:
- 26: Create Controller, Service Repository and Validation.
- 27: Implement JUnit and Mockito for testing.

| ID | WBS | Task | Duration | Start | Finish | Predecessors | Complete | Remaining | Total slack | Free slack | Constraint | Resources | Work | Actual work |
| --- | --- | --- | --- | --- | --- | --- | --- | --- | --- | --- | --- | --- | --- | --- |
| 28 | WBS_001 | **User Registration Module** | 7.5d | 2019-04-23 08:00 A | 2019-05-02 12:00 |  | 11% | 6.66d | 0d |  |  |  | 68h | 7.6h |
| 29 | WBS_001_001 | **Register new User** | 7.5d | 2019-04-23 08:00 A | 2019-05-02 12:00 |  | 8% | 6.89d | 0d |  |  |  | 44h | 3.6h |
| 30 | WBS_001_001-001 | Design UI | 0.5d | 2019-04-23 08:00 A | 2019-04-23 12:00 | 26 | 90% | 0.05d | 0d |  | start no earlier than 2019-04-22 08:00 | Stanley | 4h | 3.6h |
| 31 | WBS_001_001-002 | Implement Backend | 0.5d | 2019-04-23 13:00 | 2019-04-23 17:00 | 30 |  |  | 9.5d | 0d |  | Stanley | 4h |  |
| 32 | WBS_001_001-003 | Testing | 1d | 2019-04-24 08:00 | 2019-04-24 17:00 | 31 |  |  | 11d | 0d |  | Niveen | 8h |  |
| 33 | WBS_001_003 | **Forget Password** | 2d | 2019-04-30 08:00 | 2019-05-01 17:00 |  |  |  | 5.5d | 0d |  |  | 16h |  |
| 34 | WBS_001_003-001 | Design UI | 0.5d | 2019-04-30 08:00 | 2019-04-30 12:00 | 31, 106 |  |  | 5.5d | 0d |  | Stanley | 4h |  |
| 35 | WBS_001_003-002 | Implement Backend | 0.5d | 2019-04-30 13:00 | 2019-04-30 17:00 | 34 |  |  | 5.5d | 0d |  | Stanley | 4h |  |
| 36 | WBS_001_003-003 | Testing | 1d | 2019-05-01 08:00 | 2019-05-01 17:00 | 35 |  |  | 6d | 0d |  | Niveen | 8h |  |
| 37 | WBS_001_004 | **Remove User** | 1.5d | 2019-05-01 08:00 | 2019-05-02 12:00 |  |  |  | 5.5d | 0d |  |  | 12h |  |
| 38 | WBS_001_004-001 | Design UI | 0.5d | 2019-05-01 08:00 | 2019-05-01 12:00 | 35 |  |  | 5.5d | 0d |  | Stanley | 4h |  |
| 39 | WBS_001_004-002 | Implement Backend | 0.5d | 2019-05-01 13:00 | 2019-05-01 17:00 | 38 |  |  | 5.5d | 0d |  | Stanley | 4h |  |
| 40 | WBS_001_004-003 | Testing | 0.5d | 2019-05-02 08:00 | 2019-05-02 12:00 | 39 |  |  | 5.5d | 0d |  | Niveen | 4h |  |
| 41 | WBS_001_005 | **Password Security** | 1.5d | 2019-04-25 13:00 | 2019-04-26 17:00 |  |  |  | 9d | 0d |  |  | 12h |  |
| 42 | WBS_001_005_001 | Design UI | 0.5d | 2019-04-25 13:00 | 2019-04-25 17:00 | 47 |  |  | 9d | 0d |  | Yee Mon | 4h |  |
| 43 | WBS_001_005_002 | Implement Backend | 0.5d | 2019-04-26 08:00 | 2019-04-26 12:00 | 42 |  |  | 9d | 0d |  | Yee Mon | 4h |  |
| 44 | WBS_001_005_003 | Testing | 0.5d | 2019-04-26 13:00 | 2019-04-26 17:00 | 43 |  |  | 9d | 0d |  | Niveen | 4h |  |
| 45 | WBS_001_002 | **User Login** | 3d | 2019-04-24 08:00 A | 2019-04-26 17:00 |  | 33% | 2d | 0d |  |  |  | 12h | 4h |
| 46 | WBS_001_002_001 | Design UI | 0.5d | 2019-04-24 08:00 A | 2019-04-24 12:00 A | 21 | 100% |  |  |  |  | Yee Mon | 4h | 4h |
| 47 | WBS_001_002_002 | Implement Backend | 0.5d | 2019-04-25 08:00 | 2019-04-25 12:00 | 22 |  |  | 9d | 0d |  | Yee Mon | 4h |  |
| 48 | WBS_001_002_003 | Testing | 0.5d | 2019-04-26 13:00 | 2019-04-26 17:00 | 47 |  |  | 9d | 0d | finish no earlier than 2019-04-26 17:00 | Niveen | 4h |  |
| 49 | WBS_005 | **Category Module** | 5d? | 2019-04-22 08:00 A | 2019-04-26 17:00 |  | 68% | 1.62d? | 0d |  |  |  | 52h | 35.2h |
| 50 | WBS_005_001 | **Create new Category** | 2.5d? | 2019-04-22 08:00 A | 2019-04-24 12:00 |  | 60% | 1d? | 0d |  |  |  | 20h | 12h |
| 51 | WBS_005_001_001 | Design UI | 0.5d | 2019-04-22 08:00 A | 2019-04-22 12:00 A |  | 100% |  |  |  |  | Niveen | 4h | 4h |
| 52 | WBS_005_001_002 | Implement BE | 1d? | 2019-04-22 13:00 A | 2019-04-23 12:00 A | 51 | 100% |  |  |  |  | Niveen | 8h | 8h |
| 53 | WBS_005_001_003 | Test | 1d? | 2019-04-23 13:00 | 2019-04-24 12:00 | 52 |  |  | 11.5d | 0d |  | Yee Mon | 8h |  |

Notes:
- 31: Create Controller, Service Repository and Validation.
- 32: Implement JUnit and Mockito for testing.
- 35: Create Controller, Service Repository and Validation.
- 36: Implement JUnit and Mockito for testing.
- 39: Create Controller, Service Repository.
- 40: Implement Junit and Mockito for testing.
- 53: QA Testing

| ID | WBS | Task | Duration | Start | Finish | Predecessors | Complete | Remaining | Total slack | Free slack | Constraint | Resources | Work | Actual work |
| --- | --- | --- | --- | --- | --- | --- | --- | --- | --- | --- | --- | --- | --- | --- |
| 54 | WBS_005_002 | **update category** | 2d? | 2019-04-23 13:00 A | 2019-04-25 12:00 |  | 75% | 0.5d? | 0d |  |  |  | 16h | 12h |
| 55 | WBS_005_002_001 | Design UI | 0.5d | 2019-04-23 13:00 A | 2019-04-23 17:00 A | 52 | 100% |  |  |  |  | Niveen | 4h | 4h |
| 56 | WBS_005_002_002 | Implement BE | 1d? | 2019-04-24 08:00 A | 2019-04-24 17:00 A | 55 | 100% |  |  |  |  | Niveen | 8h | 8h |
| 57 | WBS_005_002_003 | Test | 0.5d | 2019-04-25 08:00 | 2019-04-25 12:00 | 56 |  |  | 10.5d | 0d |  | Yee Mon | 4h |  |
| 58 | WBS_005_003 | **remove category** | 2d? | 2019-04-25 08:00 A | 2019-04-26 17:00 |  | 70% | 0.6d? | 0d |  |  |  | 16h | 11.2h |
| 59 | WBS_005_003_001 | Design UI | 0.5d | 2019-04-25 08:00 A | 2019-04-25 12:00 A | 56 | 100% |  |  |  |  | Niveen | 4h | 4h |
| 60 | WBS_005_003_002 | Implement BE | 1d? | 2019-04-25 13:00 A | 2019-04-26 12:00 | 59 | 90% | 0.1d? | 0d |  |  | Niveen | 8h | 7.2h |
| 61 | WBS_005_003_003 | Test | 0.5d | 2019-04-26 13:00 | 2019-04-26 17:00 | 60 |  |  | 9d | 0d |  | Yee Mon | 4h |  |
| 62 | WBS_004 | **Product Module** | 3.8d | 2019-04-22 08:00 A | 2019-04-25 15:24 |  | 77% | 0.89d | 0d |  |  |  | 36h | 27.6h |
| 63 | WBS_004_001 | **Add Product** | 1.9d | 2019-04-22 08:00 A | 2019-04-23 16:12 |  | 79% | 0.4d | 0d |  |  |  | 15.2h | 12h |
| 64 | WBS_004_001_001 | Design UI | 0.5d | 2019-04-22 08:00 A | 2019-04-22 12:00 A |  | 100% |  |  |  | start no earlier than 2019-04-22 08:00 | Jean | 4h | 4h |
| 65 | WBS_004_001_002 | Implement BE | 1d | 2019-04-22 13:00 A | 2019-04-23 12:00 A | 64 | 100% |  |  |  |  | Jean | 8h | 8h |
| 66 | WBS_004_001_003 | Test | 0.4d | 2019-04-23 13:00 | 2019-04-23 16:12 | 65 |  |  | 12.1d | 0d |  | Stanley | 3.2h |  |
| 67 | WBS_004_002 | **Remove Product** | 1.3d | 2019-04-23 13:00 A | 2019-04-24 15:24 |  | 73% | 0.35d | 0d |  |  |  | 10.4h | 7.6h |
| 68 | WBS_004_002_001 | Design UI | 0.5d | 2019-04-23 13:00 A | 2019-04-23 17:00 A | 65 | 100% |  |  |  |  | Jean | 4h | 4h |
| 69 | WBS_004_002_002 | Implement BE | 0.5d | 2019-04-24 08:00 A | 2019-04-24 12:00 | 68 | 90% | 0.05d | 0d |  |  | Jean | 4h | 3.6h |
| 70 | WBS_004_002_003 | Test | 0.3d | 2019-04-24 13:00 | 2019-04-24 15:24 | 69 |  |  | 11.2d | 0d |  | Stanley | 2.4h |  |
| 71 | WBS_004_003 | **Update Product** | 1.3d | 2019-04-24 13:00 A | 2019-04-25 15:24 |  | 77% | 0.3d | 0d |  |  |  | 10.4h | 8h |
| 72 | WBS_004_003_001 | Design UI | 0.5d | 2019-04-24 13:00 A | 2019-04-24 17:00 A | 69 | 100% |  |  |  |  | Jean | 4h | 4h |
| 73 | WBS_004_003_002 | Implement BE | 0.5d | 2019-04-25 08:00 A | 2019-04-25 12:00 A | 72 | 100% |  |  |  |  | Jean | 4h | 4h |
| 74 | WBS_004_003_003 | Test | 0.3d | 2019-04-25 13:00 | 2019-04-25 15:24 | 73 |  |  | 10.2d | 0d |  | Stanley | 2.4h |  |
| 75 | WBS_012_001 | **Admin Registration** | 3d | 2019-04-22 08:00 A | 2019-04-24 17:00 |  | 83% | 0.5d | 0d |  |  |  | 24h | 20h |
| 76 | WBS_012_001-001 | Design UI | 1d | 2019-04-22 08:00 A | 2019-04-22 17:00 A |  | 100% |  |  |  |  | Ulugbek | 8h | 8h |
| 77 | WBS_012_001-002 | Implement backend | 1.5d | 2019-04-23 08:00 A | 2019-04-24 12:00 A | 76 | 100% |  |  |  |  | Ulugbek | 12h | 12h |
| 78 | WBS_012_001-003 | Testing | 0.5d | 2019-04-24 13:00 | 2019-04-24 17:00 | 77 |  |  | 11d | 0d |  | Jean | 4h |  |

Notes:
- 57: QA Testing
- 61: QA Testing
- 66: QA Testing
- 70: QA Testing
- 74: QA Testing

| ID | WBS | Task | Duration | Start | Finish | Predecessors | Complete | Remaining | Total slack | Free slack | Constraint | Resources | Work | Actual work |
| --- | --- | --- | --- | --- | --- | --- | --- | --- | --- | --- | --- | --- | --- | --- |
| 79 | WBS_003_001 | **General Search** | 2.5d | 2019-04-24 13:00 | 2019-04-26 17:00 |  |  |  | 6.5d | 0d |  |  | 20h |  |
| 80 | WBS_003_001-001 | Design UI | 0.5d | 2019-04-24 13:00 | 2019-04-24 17:00 | 77 |  |  | 6.5d | 0d |  | Ulugbek | 4h |  |
| 81 | WBS_003_001-002 | Implement backend | 1.5d | 2019-04-25 08:00 | 2019-04-26 12:00 | 80 |  |  | 6.5d | 0d |  | Ulugbek | 12h |  |
| 82 | WBS_003_001-003 | Testing | 0.5d | 2019-04-26 13:00 | 2019-04-26 17:00 | 81 |  |  | 9d | 0d |  | Jean | 4h |  |
| 83 | BWS_008 | **Payment Module** | 3d | 2019-04-22 08:00 A | 2019-04-24 17:00 |  | 67% | 1d | 0d |  |  |  | 24h | 16h |
| 84 | BWS_008_001 | Mock Payment Gateway | 1d | 2019-04-22 08:00 A | 2019-04-22 17:00 A |  | 100% |  |  |  |  | Bon | 8h | 8h |
| 85 | BWS_008_002 | Integrate with module WBS_007 | 1d | 2019-04-23 08:00 A | 2019-04-23 17:00 A | 84 | 100% |  |  |  |  | Bon | 8h | 8h |
| 86 | BWS_008_003 | Testing | 1d | 2019-04-24 08:00 | 2019-04-24 17:00 | 85 |  |  | 11d | 0d |  | Ulugbek | 8h |  |
| 87 | 2 | **Iteration 3** | 7d? | 2019-04-24 08:00 A | 2019-05-02 17:00 |  | 1% | 6.9d? | 0d |  |  |  | 190h | 2.8h |
| 88 | WBS_006 | **Shopping Cart Module** | 3.25d | 2019-04-29 08:00 | 2019-05-02 10:00 |  |  |  | 5d | 0d |  |  | 70h |  |
| 89 | WBS_006_001 | **View Cart** | 1.5d | 2019-04-29 08:00 | 2019-04-30 12:00 |  |  |  | 5.75d | 0d |  |  | 12h |  |
| 90 | WBS_006_001_001 | Design UI | 0.5d | 2019-04-29 08:00 | 2019-04-29 12:00 |  |  |  | 5.75d | 0d | start no earlier than 2019-04-29 08:00 | Yee Mon | 4h |  |
| 91 | WBS_006_001_002 | Implment Backend | 0.5d | 2019-04-29 13:00 | 2019-04-29 17:00 | 90 |  |  | 5.75d | 0d |  | Yee Mon | 4h |  |
| 92 | WBS_006_001_003 | Testing | 0.5d | 2019-04-30 08:00 | 2019-04-30 12:00 | 91 |  |  | 7.5d | 0d |  | Jean | 4h |  |
| 93 | WBS_006_002 | **Add Cart** | 1.5d | 2019-04-30 08:00 | 2019-05-01 12:00 |  |  |  | 5.75d | 0d |  |  | 12h |  |
| 94 | WBS_006_002_001 | Design UI | 0.5d | 2019-04-30 08:00 | 2019-04-30 12:00 | 91 |  |  | 5.75d | 0d |  | Yee Mon | 4h |  |
| 95 | WBS_006_002_002 | Implement Backend | 0.5d | 2019-04-30 13:00 | 2019-04-30 17:00 | 94 |  |  | 5.75d | 0d |  | Yee Mon | 4h |  |
| 96 | WBS_006_002_003 | Testing | 0.5d | 2019-05-01 08:00 | 2019-05-01 12:00 | 95 |  |  | 6.5d | 0d |  | Jean | 4h |  |
| 97 | WBS_006_003 | **Remove** | 1.25d | 2019-05-01 08:00 | 2019-05-02 10:00 |  |  |  | 5.75d | 0d |  |  | 10h |  |
| 98 | WBS_006_003_001 | Design UI | 0.25d | 2019-05-01 08:00 | 2019-05-01 10:00 | 95 |  |  | 5.75d | 0d |  | Yee Mon | 2h |  |
| 99 | WBS_006_003_002 | Implement Backend | 0.5d | 2019-05-01 10:00 | 2019-05-01 15:00 | 98 |  |  | 5.75d | 0d |  | Yee Mon | 4h |  |
| 100 | WBS_006_003_003 | Testing | 0.5d | 2019-05-01 15:00 | 2019-05-02 10:00 | 99 |  |  | 5.75d | 0d |  | Jean | 4h |  |
| 101 | WBS_006_005 | **Checkout Cart** | 1.5d | 2019-04-29 08:00 | 2019-04-30 12:00 |  |  |  | 7.5d | 0d |  |  | 12h |  |
| 102 | WBS_006_005_001 | Design UI | 0.5d | 2019-04-29 08:00 | 2019-04-29 12:00 |  |  |  | 7.5d | 0d | start no earlier than 2019-04-29 08:00 | Yee Mon | 4h |  |
| 103 | WBS_006_005_002 | Implement Backend | 0.5d | 2019-04-29 13:00 | 2019-04-29 17:00 | 102 |  |  | 7.5d | 0d |  | Yee Mon | 4h |  |
| 104 | WBS_006_005_003 | Testing | 0.5d | 2019-04-30 08:00 | 2019-04-30 12:00 | 103 |  |  | 7.5d | 0d |  | Jean | 4h |  |

| ID | WBS | Task | Duration | Start | Finish | Predecessors | Complete | Remaining | Total slack | Free slack | Constraint | Resources | Work | Actual work |
| --- | --- | --- | --- | --- | --- | --- | --- | --- | --- | --- | --- | --- | --- | --- |
| 105 | WBS_006_004 | **Edit** | 3d | 2019-04-29 08:00 | 2019-05-01 17:00 |  |  |  | 5d | 0d |  |  | 24h |  |
| 106 | WBS_006_004-001 | Design UI | 1d | 2019-04-29 08:00 | 2019-04-29 17:00 |  |  |  | 5d | 0d | start no earlier than 2019-04-29 08:00 | Stanley | 8h |  |
| 107 | WBS_006_004-002 | Implement Backend | 1d | 2019-04-30 08:00 | 2019-04-30 17:00 | 106 |  |  | 6d | 0d |  | Stanley | 8h |  |
| 108 | WBS_006_004-003 | Testing | 1d | 2019-05-01 08:00 | 2019-05-01 17:00 | 107 |  |  | 6d | 0d |  | Jean | 8h |  |
| 109 | WBS_007 | **Order Module** | 3d? | 2019-04-30 08:00 | 2019-05-02 17:00 |  |  |  | 5d | 0d |  |  | 24h |  |
| 110 | WBS_007_001 | **Process Order UI** | 3d? | 2019-04-30 08:00 | 2019-05-02 17:00 |  |  |  | 5d | 0d |  |  | 24h |  |
| 111 | WBS_007_001_001 | Design UI | 1d? | 2019-04-30 08:00 | 2019-04-30 17:00 | 69, 106 |  |  | 5d | 0d | start no earlier than 2019-04-29 08:00 | Jean | 8h |  |
| 112 | WBS_007_001_002 | Implement BE | 1d? | 2019-05-01 08:00 | 2019-05-01 17:00 | 111 |  |  | 5d | 0d |  | Jean | 8h |  |
| 113 | WBS_007_001_003 | Test & Integrate with module WBS_010 | 1d? | 2019-05-02 08:00 | 2019-05-02 17:00 | 112 |  |  | 5d | 0d |  | Bon | 8h |  |
| 114 | WBS_003_002 | **Advanced Search** | 3d | 2019-04-29 08:00 | 2019-05-01 17:00 |  |  |  | 6d | 0d |  |  | 24h |  |
| 115 | WBS_003_002_001 | Design UI | 1d | 2019-04-29 08:00 | 2019-04-29 17:00 | 81 |  |  | 6d | 0d | start no earlier than 2019-04-29 08:00 | Ulugbek | 8h |  |
| 116 | WBS_003_002_002 | Implement backend | 1d | 2019-04-30 08:00 | 2019-04-30 17:00 | 115 |  |  | 6d | 0d |  | Ulugbek | 8h |  |
| 117 | WBS_003_002_003 | Testing | 1d | 2019-05-01 08:00 | 2019-05-01 17:00 | 116 |  |  | 6d | 0d |  | Bon | 8h |  |
| 118 | WBS_009 | **Reporting Module** | 6.2d? | 2019-04-24 08:00 A | 2019-05-02 09:36 |  | 4% | 5.93d? | 0d |  |  |  | 64h | 2.8h |
| 119 | WBS_009_001 | **Weekly Report** | 1.2d | 2019-04-24 08:00 A | 2019-04-25 09:36 |  | 29% | 0.85d | 0d |  |  |  | 9.6h | 2.8h |
| 120 | WBS_009_001_001 | Sale by product category | 0.5d | 2019-04-24 08:00 A | 2019-04-24 12:00 | 85 | 70% | 0.15d | 0d |  |  | Bon | 4h | 2.8h |
| 121 | WBS_009_001_002 | Sale by product | 0.2d | 2019-04-24 13:00 | 2019-04-24 14:36 | 120 |  |  | 5.8d | 0d |  | Bon | 1.6h |  |
| 122 | WBS_009_001_003 | Overall | 0.3d | 2019-04-24 14:36 | 2019-04-24 17:00 | 121 |  |  | 5.8d | 0d |  | Bo | 2.4h |  |
| 123 | WBS_009_001_004 | Testing | 0.2d | 2019-04-25 08:00 | 2019-04-25 09:36 | 122 |  |  | 10.8d | 0d |  | Stanley | 1.6h |  |
| 124 | WBS_009_002 | **Monthly Report** | 1.2d | 2019-04-25 08:00 | 2019-04-26 09:36 |  |  |  | 5.8d | 0d |  |  | 9.6h |  |
| 125 | WBS_009_002_001 | Sale by product category | 0.5d | 2019-04-25 08:00 | 2019-04-25 12:00 | 122 |  |  | 5.8d | 0d |  | Bon | 4h |  |
| 126 | WBS_009_002_002 | Sale by product | 0.2d | 2019-04-25 13:00 | 2019-04-25 14:36 | 125 |  |  | 5.8d | 0d |  | Bon | 1.6h |  |
| 127 | WBS_009_002_003 | Overall | 0.3d | 2019-04-25 14:36 | 2019-04-25 17:00 | 126 |  |  | 5.8d | 0d |  | Bon | 2.4h |  |
| 128 | WBS_009_002_004 | Testing | 0.2d | 2019-04-26 08:00 | 2019-04-26 09:36 | 127 |  |  | 9.8d | 0d |  | Stanley | 1.6h |  |

Notes:
- 107: Create Controller, Service Repository.
- 108: Implement Junit and Mockito for testing.
- 113: QA Testing
- 120: Finished Backend. Studying JasperReport for developing frontend

| ID | WBS | Task | Duration | Start | Finish | Predecessors | Total slack | Free slack | Constraint | Resources | Work |
| --- | --- | --- | --- | --- | --- | --- | --- | --- | --- | --- | --- |
| 129 | WBS_009_003 | **Quarterly Report** | 1.2d | 2019-04-26 08:00 | 2019-04-29 09:36 |  | 5.8d | 0d |  |  | 9.6h |
| 130 | WBS_009_003_001 | Sale by product category | 0.5d | 2019-04-26 08:00 | 2019-04-26 12:00 | 127 | 5.8d | 0d |  | Bon | 4h |
| 131 | WBS_009_003_002 | Sale by product | 0.3d | 2019-04-26 13:00 | 2019-04-26 15:24 | 130 | 5.8d | 0d |  | Bon | 2.4h |
| 132 | WBS_009_003_003 | Overall | 0.2d | 2019-04-26 15:24 | 2019-04-26 17:00 | 131 | 5.8d | 0d |  | Bon | 1.6h |
| 133 | WBS_009_003_004 | Testing | 0.2d | 2019-04-29 08:00 | 2019-04-29 09:36 | 132 | 8.8d | 0d |  | Ulugbek | 1.6h |
| 134 | WBS_009_004 | **Half Year Report** | 1.2d | 2019-04-29 08:00 | 2019-04-30 09:36 |  | 5.8d | 0d |  |  | 9.6h |
| 135 | WBS_009_004_001 | Sale by product category | 0.5d | 2019-04-29 08:00 | 2019-04-29 12:00 | 132 | 5.8d | 0d |  | Bon | 4h |
| 136 | WBS_009_004_002 | Sale by product | 0.3d | 2019-04-29 13:00 | 2019-04-29 15:24 | 135 | 5.8d | 0d |  | Bon | 2.4h |
| 137 | WBS_009_004_003 | Overall | 0.2d | 2019-04-29 15:24 | 2019-04-29 17:00 | 136 | 5.8d | 0d |  | Bon | 1.6h |
| 138 | WBS_009_004_004 | Testing | 0.2d | 2019-04-30 08:00 | 2019-04-30 09:36 | 137 | 7.8d | 0d |  | Ulugbek | 1.6h |
| 139 | WBS_009_005 | **Annually Report** | 2d? | 2019-04-30 08:00 | 2019-05-01 17:00 |  | 5.8d | 0d |  |  | 16h |
| 140 | WBS_009_005_001 | Sale by product category | 0.5d | 2019-04-30 08:00 | 2019-04-30 12:00 | 137 | 5.8d | 0d |  | Bon | 4h |
| 141 | WBS_009_005_002 | Sale by product | 0.3d | 2019-04-30 13:00 | 2019-04-30 15:24 | 140 | 5.8d | 0d |  | Bon | 2.4h |
| 142 | WBS_009_005_003 | Overall | 0.2d | 2019-04-30 15:24 | 2019-04-30 17:00 | 141 | 5.8d | 0d |  | Bon | 1.6h |
| 143 | WBS_009_005_004 | Testing | 1d? | 2019-05-01 08:00 | 2019-05-01 17:00 | 142 | 6d | 0d |  | Ulugbek | 8h |
| 144 | WBS_009_006 | **Ad-hoc Report** | 1.2d | 2019-05-01 08:00 | 2019-05-02 09:36 |  | 5.8d | 0d |  |  | 9.6h |
| 145 | WBS_009_006_001 | Sale by product category | 0.5d | 2019-05-01 08:00 | 2019-05-01 12:00 | 142 | 5.8d | 0d |  | Bon | 4h |
| 146 | WBS_009_006_002 | Sale by product | 0.3d | 2019-05-01 13:00 | 2019-05-01 15:24 | 145 | 5.8d | 0d |  | Bon | 2.4h |
| 147 | WBS_009_006_003 | Overall | 0.2d | 2019-05-01 15:24 | 2019-05-01 17:00 | 146 | 5.8d | 0d |  | Bon | 1.6h |
| 148 | WBS_009_006_004 | Testing | 0.2d | 2019-05-02 08:00 | 2019-05-02 09:36 | 147 | 5.8d | 0d |  | Ulugbek | 1.6h |
| 149 | WBS_010 | **SMTP Module** | 1d | 2019-04-29 08:00 | 2019-04-29 17:00 |  | 8d | 0d |  |  | 8h |
| 150 | WBS_010_001 | Email Function | 1d | 2019-04-29 08:00 | 2019-04-29 17:00 |  | 8d | 0d | start no earlier than 2019-04-29 08:00 | Stanley | 8h |
| 151 | 2 | **Iteration 4** | 3.1d | 2019-05-06 08:00 | 2019-05-09 08:48 |  | 0d |  |  |  | 24h |
| 152 | 1.5.1 | Build | 0.5d | 2019-05-06 08:00 | 2019-05-06 12:00 |  | 0d |  | start no earlier than 2019-05-06 08:00 | Bon | 4h |
| 153 | 1.5.2 | Sys App Testing | 2.5d | 2019-05-06 13:00 | 2019-05-08 17:00 | 152 | 0d |  |  | All team | 20h |
| 154 | 1.5.3 | Project Presentation | 0.1d | 2019-05-09 08:00 | 2019-05-09 08:48 | 153 | 0d |  |  |  |  |
